# PRJ_DWS_SN

Schedule from MS Project, 2012-12-28 to 2013-03-15.
Microsoft

## Calendars

- Standard: Mon-Fri 08:00-12:00, 13:00-17:00; Sat-Sun off. Exceptions (off unless hours are given): 2012-12-29 08:00-12:00, 13:00-17:00, 2013-01-05 08:00-12:00, 13:00-17:00, 2013-01-12 08:00-12:00, 13:00-17:00.

## Schedule

| ID | WBS | Task | Type | Duration | Start | Finish | Predecessors | Total slack | Free slack | Constraint |
| --- | --- | --- | --- | --- | --- | --- | --- | --- | --- | --- |
| 1 | 1 | **Project: ALIF Document Workflow System** |  | 59d | 2012-12-28 | 2013-03-15 |  | 0d |  |  |
| 2 | 1.1 | **Project Documentation** |  | 5d | 2012-12-28 | 2013-01-02 |  | 0d |  |  |
| 3 | 1.1.1 | Functional Requirement Specification |  | 2d | 2012-12-28 | 2012-12-29 |  | 0d |  | start no earlier than 2012-12-28 |
| 4 | 1.1.2 | **Use Cases** |  | 3d | 2012-12-31 | 2013-01-02 | 3 | 54d |  |  |
| 5 | 1.1.2.1 | Use Case Diagram |  | 2d | 2012-12-31 | 2013-01-01 |  | 55d |  | finish no earlier than 2013-01-01 |
| 6 | 1.1.2.2 | Elaborated Uses Cases |  | 2d | 2012-12-31 | 2013-01-01 |  | 54d | 0d | finish no earlier than 2013-01-01 |
| 7 | 1.1.2.3 | Workflow Diagrams |  | 1d | 2013-01-02 | 2013-01-02 | 6 | 54d |  |  |
| 8 | 1.1.3 | GUI |  | 1d | 2012-12-31 | 2012-12-31 | 3 | 0d |  |  |
| 9 | 1.1.4 | Traceability Matrix |  | 1d | 2013-01-01 | 2013-01-01 | 8 | 55d |  |  |
| 10 | 1.2 | **Project Design Phase** |  | 18d | 2012-12-31 | 2013-01-22 | 8 | 0d |  |  |
| 11 | 1.2.1 | **Database Modelling** |  | 2d | 2012-12-31 | 2013-01-02 |  | 0d |  |  |
| 12 | 1.2.1.1 | Admin Section | milestone | 0d | 2012-12-31 | 2012-12-31 |  | 2d |  |  |
| 13 | 1.2.1.2 | User Section |  | 2d | 2013-01-01 | 2013-01-02 |  | 0d |  |  |
| 14 | 1.2.2 | **Design Section** |  | 16d | 2013-01-02 | 2013-01-22 | 11 | 0d |  |  |
| 15 | 1.2.2.1 | Login | milestone | 0d | 2013-01-02 | 2013-01-02 |  | 16d |  |  |
| 16 | 1.2.2.2 | **Admin Section** |  | 7d | 2013-01-02 | 2013-01-10 |  | 0d |  |  |
| 17 | 1.2.2.2.1 | **Global Settings** |  | 1d | 2013-01-02 | 2013-01-03 |  | 0d |  |  |
| 18 | 1.2.2.2.1.1 | Company Profile |  | 1d | 2013-01-03 | 2013-01-03 |  | 0d |  | start no earlier than 2012-12-28 |
| 19 | 1.2.2.2.1.2 | Company Project/Branches Detail |  | 1d | 2013-01-03 | 2013-01-03 |  | 0d |  | start no earlier than 2012-12-28 |
| 20 | 1.2.2.2.1.3 | Database Settings |  | 1d | 2013-01-03 | 2013-01-03 |  | 0d |  | start no earlier than 2012-12-28 |
| 21 | 1.2.2.2.1.4 | Email Server Settings | milestone | 0d | 2013-01-02 | 2013-01-02 |  | 1d |  | start no earlier than 2012-12-28 |
| 22 | 1.2.2.2.1.5 | File Server Settings |  | 1d | 2013-01-03 | 2013-01-03 |  | 0d |  | start no earlier than 2012-12-28 |
| 23 | 1.2.2.2.1.6 | **List Definitions** |  | 1d | 2013-01-03 | 2013-01-03 |  | 0d |  |  |
| 24 | 1.2.2.2.1.6.1 | Definition Types |  | 1d | 2013-01-03 | 2013-01-03 |  | 0d |  | start no earlier than 2012-12-28 |
| 25 | 1.2.2.2.1.6.2 | Definitions |  | 1d | 2013-01-03 | 2013-01-03 |  | 0d |  | start no earlier than 2012-12-28 |

| ID | WBS | Task | Type | Duration | Start | Finish | Predecessors | Total slack | Constraint |
| --- | --- | --- | --- | --- | --- | --- | --- | --- | --- |
| 26 | 1.2.2.2.2 | **Document Catalog** |  | 1d | 2013-01-03 | 2013-01-04 | 17 | 5d |  |
| 27 | 1.2.2.2.2.1 | Catalog Grid UI | milestone | 0d | 2013-01-03 | 2013-01-03 |  | 6d | start no earlier than 2012-12-28 |
| 28 | 1.2.2.2.2.2 | Catalog Entry Screen |  | 1d | 2013-01-04 | 2013-01-04 |  | 5d | start no earlier than 2012-12-28 |
| 29 | 1.2.2.2.3 | **Document Type** |  | 1d | 2013-01-04 | 2013-01-04 | 17 | 0d |  |
| 30 | 1.2.2.2.3.1 | Document Type Grid UI |  | 1d | 2013-01-04 | 2013-01-04 |  | 0d | start no earlier than 2012-12-28 |
| 31 | 1.2.2.2.3.2 | Document Type Entry Screen |  | 1d | 2013-01-04 | 2013-01-04 |  | 0d | start no earlier than 2012-12-28 |
| 32 | 1.2.2.2.4 | **Document Properties** |  | 1d | 2013-01-05 | 2013-01-05 | 29 | 0d |  |
| 33 | 1.2.2.2.4.1 | Document Property Search UI |  | 1d | 2013-01-05 | 2013-01-05 |  | 0d | start no earlier than 2012-12-28 |
| 34 | 1.2.2.2.4.2 | Document Property Entry Screen |  | 1d | 2013-01-05 | 2013-01-05 |  | 0d | start no earlier than 2012-12-28 |
| 35 | 1.2.2.2.5 | Emai/Message Templates |  | 1d | 2013-01-07 | 2013-01-07 | 32 | 3d | start no earlier than 2012-12-29 |
| 36 | 1.2.2.2.6 | Activity Monitor |  | 1d | 2013-01-07 | 2013-01-07 | 32 | 0d | start no earlier than 2012-12-29 |
| 37 | 1.2.2.2.7 | **Application Security** |  | 1d | 2013-01-07 | 2013-01-08 | 36 | 0d |  |
| 38 | 1.2.2.2.7.1 | User Profiles | milestone | 0d | 2013-01-07 | 2013-01-07 |  | 1d | start no earlier than 2012-12-31 |
| 39 | 1.2.2.2.7.2 | User Roles Definition |  | 1d | 2013-01-08 | 2013-01-08 |  | 0d | start no earlier than 2012-12-31 |
| 40 | 1.2.2.2.7.3 | User Permissions |  | 1d | 2013-01-08 | 2013-01-08 |  | 0d | start no earlier than 2012-12-31 |
| 41 | 1.2.2.2.8 | **Workflow Process** |  | 1d | 2013-01-09 | 2013-01-09 | 37 | 1d |  |
| 42 | 1.2.2.2.8.1 | Workflow Process Search UI |  | 1d | 2013-01-09 | 2013-01-09 |  | 1d | start no earlier than 2013-01-01 |
| 43 | 1.2.2.2.8.2 | Entry Wizard Step-1: Workflow Definition |  | 1d | 2013-01-09 | 2013-01-09 |  | 1d | start no earlier than 2013-01-02 |
| 44 | 1.2.2.2.8.3 | Entry Wizard Step-2: Workflow Members |  | 1d | 2013-01-09 | 2013-01-09 |  | 1d | start no earlier than 2013-01-02 |
| 45 | 1.2.2.2.9 | **Reporting** |  | 1d | 2013-01-09 | 2013-01-09 | 37 | 0d |  |
| 46 | 1.2.2.2.9.1 | Report Calling UI |  | 1d | 2013-01-09 | 2013-01-09 |  | 0d | start no earlier than 2013-01-03 |
| 47 | 1.2.2.2.9.2 | Report Viewer UI |  | 1d | 2013-01-09 | 2013-01-09 |  | 0d | start no earlier than 2013-01-03 |
| 48 | 1.2.2.2.10 | **Admin Home Page** |  | 1d | 2013-01-10 | 2013-01-10 | 45 | 0d |  |
| 49 | 1.2.2.2.10.1 | Admin Dashboard |  | 1d | 2013-01-10 | 2013-01-10 |  | 0d | start no earlier than 2013-01-04 |
| 50 | 1.2.2.2.10.2 | Page Header |  | 1d | 2013-01-10 | 2013-01-10 |  | 0d | start no earlier than 2013-01-03 |
| 51 | 1.2.2.2.10.3 | Page Footer |  | 1d | 2013-01-10 | 2013-01-10 |  | 0d | start no earlier than 2013-01-03 |
| 52 | 1.2.2.2.10.4 | Page Sidebar |  | 1d | 2013-01-10 | 2013-01-10 |  | 0d | start no earlier than 2013-01-03 |
| 53 | 1.2.2.2.10.5 | Admin Master Theme |  | 1d | 2013-01-10 | 2013-01-10 |  | 0d | start no earlier than 2013-01-04 |

| ID | WBS | Task | Type | Duration | Start | Finish | Predecessors | Total slack | Constraint |
| --- | --- | --- | --- | --- | --- | --- | --- | --- | --- |
| 54 | 1.2.2.3 | **User Section** |  | 7d | 2013-01-10 | 2013-01-18 | 16 | 0d |  |
| 55 | 1.2.2.3.1 | Document Upload | milestone | 0d | 2013-01-10 | 2013-01-10 | 16 | 0d | start no earlier than 2013-01-05 |
| 56 | 1.2.2.3.2 | Document Search |  | 1d | 2013-01-11 | 2013-01-11 | 55 | 6d |  |
| 57 | 1.2.2.3.3 | Document Property Entry Screen |  | 1d | 2013-01-11 | 2013-01-11 | 55 | 6d | start no earlier than 2013-01-07 |
| 58 | 1.2.2.3.4 | Document Emailing |  | 1d | 2013-01-11 | 2013-01-11 | 55 | 0d | start no earlier than 2013-01-07 |
| 59 | 1.2.2.3.5 | Catalog Browser (control not available, R&D Required) |  | 2d | 2013-01-12 | 2013-01-14 | 58 | 0d | start no earlier than 2013-01-08 |
| 60 | 1.2.2.3.6 | Document Approval/Rejection UI |  | 1d | 2013-01-15 | 2013-01-15 | 59 | 0d | start no earlier than 2013-01-09 |
| 61 | 1.2.2.3.7 | Document Start Approval Process UI (Retention Attached) |  | 1d | 2013-01-16 | 2013-01-16 | 60 | 0d | start no earlier than 2013-01-09 |
| 62 | 1.2.2.3.8 | Revised Workflow Document Upload |  | 1d | 2013-01-16 | 2013-01-16 | 60 | 0d |  |
| 63 | 1.2.2.3.9 | **User Homepage** |  | 2d | 2013-01-17 | 2013-01-18 | 62 | 0d |  |
| 64 | 1.2.2.3.9.1 | User Dashboard |  | 2d | 2013-01-17 | 2013-01-18 | 61 | 0d |  |
| 65 | 1.2.2.3.9.2 | User Section Header |  | 1d | 2013-01-17 | 2013-01-17 | 61 | 1d |  |
| 66 | 1.2.2.3.9.3 | User Section Sidebar |  | 1d | 2013-01-17 | 2013-01-17 | 61 | 1d | start no earlier than 2013-01-05 |
| 67 | 1.2.2.4 | Project Online Marketing & Sale Section |  | 2d | 2013-01-21 | 2013-01-22 | 54 | 0d |  |
| 68 | 1.3 | **Project Development Phase** |  | 31d | 2013-01-23 | 2013-03-06 | 14 | 0d |  |
| 69 | 1.3.1 | **Development Section** |  | 31d | 2013-01-23 | 2013-03-06 |  | 0d |  |
| 70 | 1.3.1.1 | Login |  | 1d | 2013-01-23 | 2013-01-23 |  | 37d |  |
| 71 | 1.3.1.2 | Activity Logging |  | 1d | 2013-01-23 | 2013-01-23 |  | 37d |  |
| 72 | 1.3.1.3 | **Admin Section** |  | 15d | 2013-01-23 | 2013-02-12 |  | 0d |  |
| 73 | 1.3.1.3.1 | **Global Settings** |  | 3d | 2013-01-23 | 2013-01-25 |  | 0d |  |
| 74 | 1.3.1.3.1.1 | Company Profile |  | 1d | 2013-01-23 | 2013-01-23 |  | 2d |  |
| 75 | 1.3.1.3.1.2 | **Company Project/Branches Detail** |  | 1d | 2013-01-23 | 2013-01-23 |  | 0d |  |
| 76 | 1.3.1.3.1.2.1 | Record Saving/Updation |  | 1d | 2013-01-23 | 2013-01-23 |  | 0d |  |
| 77 | 1.3.1.3.1.3 | Database Settings |  | 1d | 2013-01-24 | 2013-01-24 | 75 | 1d |  |
| 78 | 1.3.1.3.1.4 | Email Server Settings |  | 1d | 2013-01-24 | 2013-01-24 | 75 | 1d |  |
| 79 | 1.3.1.3.1.5 | File Server Settings |  | 1d | 2013-01-24 | 2013-01-24 | 75 | 0d | start no earlier than 2013-01-12 |

| ID | WBS | Task | Duration | Start | Finish | Predecessors | Total slack | Constraint |
| --- | --- | --- | --- | --- | --- | --- | --- | --- |
| 80 | 1.3.1.3.1.6 | **List Definitions** | 1d | 2013-01-25 | 2013-01-25 | 79 | 0d |  |
| 81 | 1.3.1.3.1.6.1 | **Definition Types** | 1d | 2013-01-25 | 2013-01-25 |  | 0d |  |
| 82 | 1.3.1.3.1.6.1.1 | Definition Type Search | 1d | 2013-01-25 | 2013-01-25 |  | 0d |  |
| 83 | 1.3.1.3.1.6.1.2 | Definiton Type Entry Screen | 1d | 2013-01-25 | 2013-01-25 |  | 0d |  |
| 84 | 1.3.1.3.1.6.2 | **Definitions** | 1d | 2013-01-25 | 2013-01-25 |  | 0d |  |
| 85 | 1.3.1.3.1.6.2.1 | Definitions Search UI | 1d | 2013-01-25 | 2013-01-25 |  | 0d |  |
| 86 | 1.3.1.3.1.6.2.2 | Definitions Entry Screen | 1d | 2013-01-25 | 2013-01-25 |  | 0d |  |
| 87 | 1.3.1.3.2 | **Document Catalog** | 1d | 2013-01-28 | 2013-01-28 | 73 | 11d |  |
| 88 | 1.3.1.3.2.1 | Catalog Grid UI | 1d | 2013-01-28 | 2013-01-28 |  | 11d |  |
| 89 | 1.3.1.3.2.2 | Catalog Entry Screen | 1d | 2013-01-28 | 2013-01-28 |  | 11d |  |
| 90 | 1.3.1.3.2.3 | Directory Folder Creation | 1d | 2013-01-28 | 2013-01-28 |  | 11d |  |
| 91 | 1.3.1.3.3 | **Document Type** | 1d | 2013-01-28 | 2013-01-28 | 73 | 0d |  |
| 92 | 1.3.1.3.3.1 | Document Type Search | 1d | 2013-01-28 | 2013-01-28 |  | 0d |  |
| 93 | 1.3.1.3.3.2 | Document Type Entry Screen | 1d | 2013-01-28 | 2013-01-28 |  | 0d |  |
| 94 | 1.3.1.3.3.3 | Directory Folder Creation | 1d | 2013-01-28 | 2013-01-28 |  | 0d |  |
| 95 | 1.3.1.3.4 | **Document Properties** | 2d | 2013-01-29 | 2013-01-30 | 91 | 0d |  |
| 96 | 1.3.1.3.4.1 | Document Property Search UI | 2d | 2013-01-29 | 2013-01-30 |  | 0d | finish no earlier than 2013-01-17 |
| 97 | 1.3.1.3.4.2 | Document Property Entry Screen | 2d | 2013-01-29 | 2013-01-30 |  | 0d |  |
| 98 | 1.3.1.3.5 | Email/Message Templates | 2d | 2013-01-31 | 2013-02-01 | 95 | 0d | finish no earlier than 2013-01-19 |
| 99 | 1.3.1.3.6 | Activity Monitor | 1d | 2013-02-04 | 2013-02-04 | 98 | 0d |  |
| 100 | 1.3.1.3.7 | **Application Security** | 2d | 2013-02-05 | 2013-02-06 | 99 | 0d |  |
| 101 | 1.3.1.3.7.1 | User Profiles | 1d | 2013-02-05 | 2013-02-05 |  | 1d |  |
| 102 | 1.3.1.3.7.2 | User Permissions | 2d | 2013-02-05 | 2013-02-06 |  | 0d |  |
| 103 | 1.3.1.3.8 | **Workflow Process** | 3d | 2013-02-07 | 2013-02-11 | 100 | 0d |  |
| 104 | 1.3.1.3.8.1 | Workflow Process Search UI | 1d | 2013-02-07 | 2013-02-07 |  | 0d |  |
| 105 | 1.3.1.3.8.2 | Entry Wizard Step-1: Workflow Definition | 2d | 2013-02-08 | 2013-02-11 | 104 | 0d | finish no earlier than 2013-01-29 |
| 106 | 1.3.1.3.8.3 | Entry Wizard Step-2: Workflow Members | 2d | 2013-02-08 | 2013-02-11 | 104 | 0d |  |

| ID | WBS | Task | Duration | Start | Finish | Predecessors | Total slack |
| --- | --- | --- | --- | --- | --- | --- | --- |
| 107 | 1.3.1.3.9 | **Reporting** | 1d | 2013-02-12 | 2013-02-12 | 103 | 0d |
| 108 | 1.3.1.3.9.1 | Report Calling | 1d | 2013-02-12 | 2013-02-12 |  | 0d |
| 109 | 1.3.1.3.9.2 | Report Viewer | 1d | 2013-02-12 | 2013-02-12 |  | 0d |
| 110 | 1.3.1.4 | **User Section** | 11d | 2013-02-13 | 2013-02-27 | 72 | 0d |
| 111 | 1.3.1.4.1 | Document Upload | 1d | 2013-02-13 | 2013-02-13 |  | 0d |
| 112 | 1.3.1.4.2 | Document Search | 1d | 2013-02-14 | 2013-02-14 | 111 | 0d |
| 113 | 1.3.1.4.3 | Document Property Entry Screen | 2d | 2013-02-15 | 2013-02-18 | 112 | 7d |
| 114 | 1.3.1.4.4 | Document Emailing | 1d | 2013-02-15 | 2013-02-15 | 112 | 0d |
| 115 | 1.3.1.4.5 | Catalog Browser | 3d | 2013-02-18 | 2013-02-20 | 114 | 0d |
| 116 | 1.3.1.4.6 | Document Approval/Rejection UI | 1d | 2013-02-21 | 2013-02-21 | 115 | 4d |
| 117 | 1.3.1.4.7 | Document Start Approval Process UI | 2d | 2013-02-21 | 2013-02-22 | 115 | 0d |
| 118 | 1.3.1.4.8 | Revised Document Uploading against Workflow Process | 2d | 2013-02-25 | 2013-02-26 | 117 | 1d |
| 119 | 1.3.1.4.9 | Document Version Procedure | 3d | 2013-02-25 | 2013-02-27 | 117 | 0d |
| 120 | 1.3.1.5 | **Project Online Marketing & Sale Section** | 2d | 2013-02-28 | 2013-03-01 | 110 | 0d |
| 121 | 1.3.1.5.1 | Customer Information Page Development | 1d | 2013-02-28 | 2013-02-28 |  | 0d |
| 122 | 1.3.1.5.2 | Paypal Integration (for Online Payment) | 1d | 2013-03-01 | 2013-03-01 | 121 | 0d |
| 123 | 1.3.1.5.3 | Download after Payment Confirmation Procedure | 1d | 2013-03-01 | 2013-03-01 | 121 | 0d |
| 124 | 1.3.1.6 | Project Licensing Implementation (Open Source License requires R&D Time. Software with License Feature will cut licensing time) | 3d | 2013-03-04 | 2013-03-06 | 120 | 0d |
| 125 | 1.4 | **Project Testing** | 2d | 2013-03-07 | 2013-03-08 | 124 | 0d |
| 126 | 1.4.1 | Customer Application Download Procedure Testing | 2d | 2013-03-07 | 2013-03-08 |  | 0d |
| 127 | 1.5 | Software Deployment Packaging (mentioned timeline is bound to condition that we found deployment packaging software) | 1d | 2013-03-11 | 2013-03-11 | 125 | 0d |
| 128 | 1.6 | User Manual + Feature Based Help on System Features | 4d | 2013-03-12 | 2013-03-15 | 127 | 0d |
